# gantt

Schedule from MS Project, 2016-03-14 to 2016-06-06, status date 2016-03-14, costs in CHF, A marks actual dates.

## Calendars

- Standard: Mon 15:00-16:00; Tue-Fri 17:00-18:00; Sat 09:00-11:00; Sun 10:00-12:00. Exceptions (off unless hours are given): 2016-03-28 to 2016-04-03 (Vacances d'avril), 2016-05-16 (Lundi de pentecôte).

## Resources

| Resource | Rate |
| --- | --- |
| Christopher Browne | 200 |
| Patrick Champion | 200 |
| Alain Hardy | 200 |
| Damien Rochat | 200 |
| Patrick Djomo | 200 |
| Sébastien Richoz | 200 |

## Schedule

| ID | WBS | Task | Type | Duration | Start | Finish | Predecessors | Complete | Remaining | Total slack | Free slack | Resources | Work | Actual work | Cost | Actual cost |
| --- | --- | --- | --- | --- | --- | --- | --- | --- | --- | --- | --- | --- | --- | --- | --- | --- |
| 1 | 1 | Début du projet | milestone, manual | 0h | 2016-03-14 A | 2016-03-14 A |  | 100% |  |  |  |  |  |  |  |  |
| 2 | 2 | **Conception** |  | 0.62d | 2016-03-14 A | 2016-03-18 |  | 70% | 0.19d | 11.62d |  |  | 30h | 21h | 6,000 | 4,200 |
| 3 | 2.1 | Définition des conventions de codage |  | 0.25h | 2016-03-14 A | 2016-03-14 A | 1 | 100% |  |  |  | Alain Hardy; Christopher Browne; Damien Rochat; Patrick Champion; Patrick Djomo; Sébastien Richoz | 1.5h | 1.5h | 300 | 300 |
| 4 | 2.2 | Diagramme UML pour les Graphes |  | 2h | 2016-03-14 A | 2016-03-16 | 3 | 25% | 1.5h | 11.97d |  | Alain Hardy; Christopher Browne; Damien Rochat; Patrick Champion; Patrick Djomo; Sébastien Richoz | 12h | 3h | 2,400 | 600 |
| 5 | 2.3 | Attribution des tâches |  | 0.75h | 2016-03-16 A | 2016-03-16 A | 4 | 100% |  |  |  | Alain Hardy; Christopher Browne; Damien Rochat; Patrick Champion; Patrick Djomo; Sébastien Richoz | 4.5h | 4.5h | 900 | 900 |
| 6 | 2.4 | Planification du projet |  | 2h | 2016-03-17 A | 2016-03-18 A | 5 | 100% |  |  |  | Christopher Browne; Alain Hardy; Damien Rochat; Patrick Champion; Patrick Djomo; Sébastien Richoz | 12h | 12h | 2,400 | 2,400 |
| 7 | 3 | **Réalisation** |  | 10.31d | 2016-03-19 | 2016-05-29 | 6 |  |  | 1d |  |  | 470.5h |  | 94,100 |  |
| 8 | 3.1 | **Implémentation des algorithmes vus en cours de GRE** |  | 9.25d | 2016-03-19 | 2016-05-22 |  |  |  | 1d | 0d | Sébastien Richoz | 143h |  | 28,600 |  |
| 9 | 3.1.1 | Enumération des algos à traiter |  | 1h | 2016-03-19 | 2016-03-19 | 6 |  |  | 1d | 0d | Patrick Djomo | 1h |  | 200 |  |
| 10 | 3.1.2 | Etude des patern Strategy et Visitor |  | 4h | 2016-03-19 | 2016-03-21 | 9 |  |  | 1d | 0d | Patrick Djomo | 4h |  | 800 |  |
| 11 | 3.1.3 | Modélisation du diagramme UML |  | 4h | 2016-03-22 | 2016-03-25 | 10 |  |  | 1d | 0d | Patrick Djomo | 4h |  | 800 |  |
| 12 | 3.1.4 | Définition des paramètres d'entrée/sortie de chaque algo |  | 4h | 2016-03-26 | 2016-03-27 | 11 |  |  | 1d | 0d | Patrick Djomo | 4h |  | 800 |  |
| 13 | 3.1.5 | Implémentation des algos |  | 30h | 2016-04-04 | 2016-04-27 | 12 |  |  | 1d | 0d | Patrick Djomo | 30h |  | 6,000 |  |
| 14 | 3.1.6 | Génération aléatoire d'un graphe |  | 5h | 2016-04-28 | 2016-05-01 | 13 |  |  | 1d | 0d |  |  |  |  |  |
| 15 | 3.1.7 | Tests |  | 14h | 2016-05-01 | 2016-05-12 | 14, 62FS-2h |  |  | 1d | 0d | Patrick Djomo | 14h |  | 2,800 |  |
| 16 | 3.1.8 | Documentation |  | 8h | 2016-05-13 | 2016-05-19 | 15 |  |  | 1d | 0d | Patrick Djomo | 8h |  | 1,600 |  |
| 17 | 3.1.9 | Tampon / Retard |  | 4h | 2016-05-20 | 2016-05-22 | 16 |  |  | 1d |  | Patrick Djomo | 4h |  | 800 |  |
| 18 | 3.2 | **Parseur et Linker** |  | 9.25d | 2016-03-19 | 2016-05-22 |  |  |  | 1d | 0d | Patrick Champion | 74h |  | 14,800 |  |
| 19 | 3.2.1 | Normalisation du langage (EBNF) |  | 8h | 2016-03-19 | 2016-03-24 |  |  |  | 1d | 0d |  |  |  |  |  |
| 20 | 3.2.2 | Modélisation du Parser/Linker |  | 4.5h | 2016-03-25 | 2016-03-27 | 19 |  |  | 1d | 0d |  |  |  |  |  |
| 21 | 3.2.3 | Implémentation du Parser |  | 12.5h | 2016-03-27 | 2016-04-13 | 20 |  |  | 1d | 0d |  |  |  |  |  |
| 22 | 3.2.4 | Tests du parseur |  | 6h | 2016-04-14 | 2016-04-17 | 21 |  |  | 1d | 0d |  |  |  |  |  |
| 23 | 3.2.5 | Implémentation du Linker |  | 11h | 2016-04-18 | 2016-04-26 | 22 |  |  | 1d | 0d |  |  |  |  |  |
| 24 | 3.2.6 | Tests du Linker |  | 6h | 2016-04-27 | 2016-05-01 | 23 |  |  | 1d | 0d |  |  |  |  |  |
| 25 | 3.2.7 | Tests généraux |  | 8h | 2016-05-01 | 2016-05-07 | 24 |  |  | 1d | 0d |  |  |  |  |  |
| 26 | 3.2.8 | Documentation en parallèle de chaque tâche |  | 16h | 2016-05-08 | 2016-05-21 | 25 |  |  | 1d | 0d |  |  |  |  |  |
| 27 | 3.2.9 | Tampon / Retard |  | 2h | 2016-05-21 | 2016-05-22 | 26 |  |  | 1d | 0.38d |  |  |  |  |  |

| ID | WBS | Task | Duration | Start | Finish | Predecessors | Total slack | Free slack | Resources | Work | Cost |
| --- | --- | --- | --- | --- | --- | --- | --- | --- | --- | --- | --- |
| 28 | 3.3 | **Dessin du graphe, édition, exportation** | 9.5d | 2016-03-19 | 2016-05-23 |  | 1.12d |  | Damien Rochat | 76h | 15,200 |
| 29 | 3.3.1 | **Dessin du graphe** | 4.25d | 2016-03-19 | 2016-04-20 |  | 1.12d | 0d |  |  |  |
| 30 | 3.3.1.1 | Apprentissage QT | 2h | 2016-03-19 | 2016-03-19 |  | 1.12d | 0d |  |  |  |
| 31 | 3.3.1.2 | Modélisation | 4h | 2016-03-20 | 2016-03-22 | 30 | 1.12d | 0d |  |  |  |
| 32 | 3.3.1.3 | Implémentation de la génération des éléments graphiques (noeuds, arcs, arêtes, pondération, etc.) | 12h | 2016-03-23 | 2016-04-08 | 31 | 1.12d | 0d |  |  |  |
| 33 | 3.3.1.4 | Implémentation des affichages des éléments et de leurs attachements | 10h | 2016-04-09 | 2016-04-16 | 32 | 1.12d | 0d |  |  |  |
| 34 | 3.3.1.5 | Tests | 2h | 2016-04-16 | 2016-04-17 | 33 | 1.12d | 0d |  |  |  |
| 35 | 3.3.1.6 | Documentation | 4h | 2016-04-17 | 2016-04-20 | 34 | 1.12d |  |  |  |  |
| 36 | 3.3.2 | **Edition du dessin** | 2.5d | 2016-04-21 | 2016-05-06 | 29 | 1.12d | 0d |  |  |  |
| 37 | 3.3.2.1 | Apprentissage QT | 2h | 2016-04-21 | 2016-04-22 |  | 1.12d | 0d |  |  |  |
| 38 | 3.3.2.2 | Modélisation | 2h | 2016-04-23 | 2016-04-23 | 37 | 1.12d | 0d |  |  |  |
| 39 | 3.3.2.3 | Implémentation de l'édition | 10h | 2016-04-24 | 2016-05-01 | 38 | 1.12d | 0d |  |  |  |
| 40 | 3.3.2.4 | Tests | 2h | 2016-05-01 | 2016-05-02 | 39 | 1.12d | 0d |  |  |  |
| 41 | 3.3.2.5 | Documentation | 4h | 2016-05-03 | 2016-05-06 | 40 | 1.12d |  |  |  |  |
| 42 | 3.3.3 | **Exportation du dessin en SVG** | 2.5d | 2016-05-07 | 2016-05-22 | 36 | 1.12d |  |  |  |  |
| 43 | 3.3.3.1 | Apprentissage QT et du format SVG | 2h | 2016-05-07 | 2016-05-07 |  | 1.12d | 0d |  |  |  |
| 44 | 3.3.3.2 | Modélisation | 2h | 2016-05-08 | 2016-05-08 | 43 | 1.12d | 0d |  |  |  |
| 45 | 3.3.3.3 | Implémentation de l'exportation | 11h | 2016-05-09 | 2016-05-18 | 44 | 1.12d | 0d |  |  |  |
| 46 | 3.3.3.4 | Tests | 3h | 2016-05-19 | 2016-05-21 | 45 | 1.12d | 0d |  |  |  |
| 47 | 3.3.3.5 | Documentation | 2h | 2016-05-21 | 2016-05-22 | 46 | 1.12d | 0d |  |  |  |
| 48 | 3.3.4 | Tampon / Retard | 2h | 2016-05-22 | 2016-05-23 | 47 | 1.12d | 0.06d |  |  |  |
| 49 | 3.4 | **GUI** | 9.25d | 2016-03-19 | 2016-05-22 |  | 1.06d |  | Alain Hardy | 79h | 15,800 |
| 50 | 3.4.1 | Apprentissage de Qt designer | 8h | 2016-03-19 | 2016-03-24 |  | 1.06d | 0d |  |  |  |
| 51 | 3.4.2 | Modélisation de l'interface | 4h | 2016-03-25 | 2016-03-27 | 50 | 1.06d | 0d |  |  |  |
| 52 | 3.4.3 | Création de l'interface graphique | 8h | 2016-03-27 | 2016-04-09 | 51 | 1.06d | 0d |  |  |  |
| 53 | 3.4.4 | Modélisation des sessions de travail | 5h | 2016-04-10 | 2016-04-13 | 52 | 1.06d | 0d |  |  |  |
| 54 | 3.4.5 | Implémentation des sessions de travail | 10h | 2016-04-14 | 2016-04-21 | 53 | 1.06d | 0d |  |  |  |
| 55 | 3.4.6 | Tests des sessions de travail | 2h | 2016-04-22 | 2016-04-23 | 54 | 1.06d | 0d |  |  |  |
| 56 | 3.4.7 | Modélisation de l'importation/exportation des sessions de travail | 4h | 2016-04-23 | 2016-04-25 | 55 | 1.06d | 0d |  |  |  |
| 57 | 3.4.8 | Implémentation de l'importation/exportation des sessions de travail | 8h | 2016-04-26 | 2016-05-01 | 56 | 1.06d | 0d |  |  |  |
| 58 | 3.4.9 | Tests de l'importation/exportation des sessions de travail | 4h | 2016-05-02 | 2016-05-05 | 57 | 1.06d | 0d |  |  |  |
| 59 | 3.4.10 | Modélisation affichage/masquage des résultats visuels des commandes | 4h | 2016-05-06 | 2016-05-08 | 58 | 1.06d | 0d |  |  |  |
| 60 | 3.4.11 | Implémentation affichage/masquage des résultats visuels des commandes | 8h | 2016-05-08 | 2016-05-14 | 59 | 1.06d | 0d |  |  |  |
| 61 | 3.4.12 | Tests de l'affichage/masquage des résultats | 1h | 2016-05-15 | 2016-05-15 | 60 | 1.06d | 0d |  |  |  |
| 62 | 3.4.13 | Historique des commandes | 5h | 2016-04-28 | 2016-05-01 | 13 | 1.25d | 0.25d | Patrick Djomo | 5h | 1,000 |
| 63 | 3.4.14 | Documentation | 6h | 2016-05-15 | 2016-05-21 | 61 | 1.06d | 0d |  |  |  |
| 64 | 3.4.15 | Tampon / Retard | 2h | 2016-05-21 | 2016-05-22 | 63 | 1.06d | 0d |  |  |  |

| ID | WBS | Task | Duration | Start | Finish | Predecessors | Total slack | Free slack | Resources | Work | Cost |
| --- | --- | --- | --- | --- | --- | --- | --- | --- | --- | --- | --- |
| 65 | 3.5 | **Aide utilisateur, Auto-complétion, Chef de projet** | 9.25d | 2016-03-19 | 2016-05-22 |  | 1.06d |  | Christopher Browne | 74h | 14,800 |
| 66 | 3.5.1 | **Aide utilisateur** | 3.25d | 2016-03-19 | 2016-04-14 |  | 1.06d |  |  |  |  |
| 67 | 3.5.1.1 | Intégration HTML dans une fenêtre Qt | 4h | 2016-03-19 | 2016-03-20 |  | 1.06d | 0d |  |  |  |
| 68 | 3.5.1.2 | Création GUI d'aide | 4h | 2016-03-21 | 2016-03-24 | 67 | 1.06d | 0d |  |  |  |
| 69 | 3.5.1.3 | Création template HTML/CSS | 6h | 2016-03-25 | 2016-04-04 | 68 | 1.06d | 0d |  |  |  |
| 70 | 3.5.1.4 | Rédaction de l'aide | 10h | 2016-04-05 | 2016-04-12 | 69 | 1.06d | 0d |  |  |  |
| 71 | 3.5.1.5 | Tests | 2h | 2016-04-13 | 2016-04-14 | 70 | 1.06d | 0d |  |  |  |
| 72 | 3.5.2 | **Auto-complétion** | 1.5d | 2016-04-15 | 2016-04-23 |  | 1.06d |  |  |  |  |
| 73 | 3.5.2.1 | Implémentation auto-complétion | 10h | 2016-04-15 | 2016-04-22 | 71 | 1.06d | 0d |  |  |  |
| 74 | 3.5.2.2 | Tests | 2h | 2016-04-23 | 2016-04-23 | 73 | 1.06d | 0d |  |  |  |
| 75 | 3.5.3 | **Dossier de projet** | 2.5d | 2016-04-24 | 2016-05-08 |  | 1.06d |  |  |  |  |
| 76 | 3.5.3.1 | Relecture | 10h | 2016-04-24 | 2016-05-01 | 74 | 1.06d | 0d |  |  |  |
| 77 | 3.5.3.2 | Rédaction | 10h | 2016-05-01 | 2016-05-08 | 76 | 1.06d | 0d |  |  |  |
| 78 | 3.5.4 | Mise au point avec le groupe | 5h | 2016-05-09 | 2016-05-13 | 77 | 1.06d | 0d |  |  |  |
| 79 | 3.5.5 | Coordination, code review | 6h | 2016-05-14 | 2016-05-18 | 78 | 1.06d | 0d |  |  |  |
| 80 | 3.5.6 | Disponible pour d'autres tâches | 3h | 2016-05-19 | 2016-05-21 | 79 | 1.06d | 0d |  |  |  |
| 81 | 3.5.7 | Tampon / Retard | 2h | 2016-05-21 | 2016-05-22 | 80 | 1.06d | 0d |  |  |  |
| 82 | 3.6 | **Mise en commun des différentes implémentations** | 1.06d | 2016-05-22 | 2016-05-29 |  | 1d | 0d |  | 24.5h | 4,900 |
| 83 | 3.6.1 | Intégration de l'aide utilisateur avec la GUI | 1.5h | 2016-05-22 | 2016-05-23 | 81, 64 | 1.06d | 0d | Christopher Browne; Alain Hardy | 3h | 600 |
| 84 | 3.6.2 | Auto-complétion avec la GUI | 1h | 2016-05-23 | 2016-05-24 | 83 | 1.06d | 0d | Christopher Browne; Alain Hardy | 2h | 400 |
| 85 | 3.6.3 | Auto-complétion avec le linker | 2.5h | 2016-05-25 | 2016-05-27 | 27, 84, 89 | 1.31d | 0d | Christopher Browne; Patrick Champion | 3.5h | 700 |
| 86 | 3.6.4 | Dessin du graphe avec GUI | 2h | 2016-05-24 | 2016-05-26 | 48, 84 | 1.06d | 0d | Alain Hardy; Damien Rochat | 4h | 800 |
| 87 | 3.6.5 | Edition du dessin avec la GUI | 2h | 2016-05-26 | 2016-05-28 | 86 | 1.06d | 0d | Damien Rochat; Alain Hardy | 4h | 800 |
| 88 | 3.6.6 | Exportation SVG avec la GUI | 2h | 2016-05-28 | 2016-05-29 | 87 | 1.06d |  | Damien Rochat; Alain Hardy | 4h | 800 |
| 89 | 3.6.7 | Linker avec les traitements (algos) | 3h | 2016-05-22 | 2016-05-24 | 18, 8 | 1d | 0d | Patrick Champion; Sébastien Richoz; Patrick Djomo | 4h | 800 |

| ID | WBS | Task | Type | Duration | Start | Finish | Predecessors | Complete | Total slack | Constraint | Deadline | Resources | Work | Cost |
| --- | --- | --- | --- | --- | --- | --- | --- | --- | --- | --- | --- | --- | --- | --- |
| 90 | 4 | **Tests** |  | 0.25d | 2016-05-29 | 2016-05-30 |  |  | 1.06d |  |  |  | 8h | 1,600 |
| 91 | 4.1 | Tests globaux de l'application |  | 2h | 2016-05-29 | 2016-05-30 | 82 |  | 1.06d |  |  | Damien Rochat; Alain Hardy; Patrick Champion; Christopher Browne | 8h | 1,600 |
| 92 | 5 | **Documentation** |  | 1d | 2016-05-25 | 2016-05-30 |  |  | 1d |  |  |  | 22h | 4,400 |
| 93 | 5.1 | Mise en commun de la doc |  | 8h | 2016-05-25 | 2016-05-30 | 89 |  | 1d |  |  | Patrick Djomo; Sébastien Richoz | 16h | 3,200 |
| 94 | 5.2 | Code review |  | 3h | 2016-05-27 | 2016-05-29 | 85 |  | 1.31d |  |  | Christopher Browne; Patrick Champion | 6h | 1,200 |
| 95 | 6 | Rendu du projet | milestone | 0h | 2016-05-30 A | 2016-05-30 A | 90, 92 | 100% |  | must start on 2016-05-30 | 2016-05-30 |  |  |  |
| 96 | 7 | Création de la présentation du projet |  | 9h | 2016-05-30 | 2016-06-05 | 95 |  | 0d |  |  |  |  |  |
| 97 | 8 | Présentation du projet à la classe | milestone | 0h | 2016-06-06 | 2016-06-06 | 96 |  | 0d | must start on 2016-06-06 | 2016-06-06 |  |  |  |

Notes:
- 95: Rendu des projets au terme de la séance à 16h25
